# PFA-Nethack

Schedule from Planner, 2012-11-30 to 2013-08-05.

## Calendars

- Défaut: Mon-Sun 08:00-12:00, 13:00-17:00.

## Resources

| Resource |
| --- |
| Ludovic Hofer |
| Benoit Ruelle |
| David Bitonneau |
| Louis Leclec'h |
| Qiwen Lu |
| Sven Taton |
| Arthur Havlicek |

## Schedule

| ID | WBS | Task | Start | Finish | Predecessors | Resources | Work |
| --- | --- | --- | --- | --- | --- | --- | --- |
| 1 | 1 | **Fin du prototypage** | 2012-11-30 | 2012-12-20 |  |  | 336h |
| 2 | 1.1 | Finition interface externe | 2012-11-30 | 2012-12-13 |  | Benoit Ruelle | 112h |
| 3 | 1.2 | Test de recette | 2012-12-14 | 2012-12-20 | 4, 2 | Ludovic Hofer; Benoit Ruelle | 112h |
| 4 | 1.3 | Finalisation des modifications noyaux | 2012-11-30 | 2012-12-13 |  | David Bitonneau | 112h |
| 5 | 2 | **Accords sur interfaces** | 2012-11-30 | 2012-12-06 |  |  | 280h |
| 6 | 2.1 | bot_handler | 2012-11-30 | 2012-12-06 |  | Ludovic Hofer [50%]; Arthur Havlicek [50%] | 56h |
| 7 | 2.2 | middle_man | 2012-11-30 | 2012-12-06 |  | Ludovic Hofer [50%]; Arthur Havlicek [50%] | 56h |
| 8 | 2.3 | game_statistics | 2012-11-30 | 2012-12-06 |  | Louis Leclec'h [50%]; Sven Taton [50%] | 56h |
| 9 | 2.4 | db_manager | 2012-11-30 | 2012-12-06 |  | Louis Leclec'h [50%]; Qiwen Lu [50%] | 56h |
| 10 | 2.5 | statistic_tool | 2012-11-30 | 2012-12-06 |  | Qiwen Lu [50%]; Sven Taton [50%] | 56h |
| 11 | 3 | **Développement des modules** | 2012-12-07 | 2013-01-14 |  |  | 1232h |
| 12 | 3.1 | middle_man | 2012-12-07 | 2013-01-14 | 8, 7, 6 | Arthur Havlicek [90%] | 280h |
| 13 | 3.2 | game_statistics | 2012-12-07 | 2013-01-03 | 9, 8 |  | 224h |
| 14 | 3.3 | bot_handler | 2012-12-07 | 2012-12-27 | 6, 7 |  | 168h |
| 15 | 3.4 | db_manager | 2012-12-07 | 2013-01-07 | 9 | Louis Leclec'h [90%] | 224h |
| 16 | 3.5 | statistic_tool | 2012-12-07 | 2013-01-03 | 10, 9 | Qiwen Lu [90%]; Sven Taton [10%] | 224h |
| 17 | 3.6 | game_launcher | 2012-12-07 | 2012-12-20 | 10 |  | 112h |
| 18 | 4 | **Tests de recette** | 2012-12-28 | 2013-02-25 |  |  | 1176h |
| 19 | 4.1 | bot_handler <-> bot | 2012-12-28 | 2013-01-17 | 14 |  | 168h |
| 20 | 4.2 | middle_man <-> bot_handler | 2013-01-14 | 2013-02-04 | 14, 12 |  | 168h |
| 21 | 4.3 | middle_man <-> game_statistics | 2013-01-14 | 2013-02-04 | 13, 12 |  | 168h |
| 22 | 4.4 | core <-> middle_man | 2013-01-14 | 2013-02-04 | 12 |  | 168h |
| 23 | 4.5 | game_statistics <-> db_manager | 2013-01-07 | 2013-01-28 | 15, 13 |  | 168h |
| 24 | 4.6 | db_manager <-> statistic_tool | 2013-01-07 | 2013-01-28 | 16, 15 |  | 168h |
| 25 | 4.7 | général | 2013-02-04 | 2013-02-25 | 24, 23, 22, 21, 20, 19, 17 |  | 168h |

| ID | WBS | Task | Start | Finish | Predecessors | Work |
| --- | --- | --- | --- | --- | --- | --- |
| 26 | 5 | **Développement des bots** | 2012-11-30 | 2013-04-22 |  | 1008h |
| 27 | 5.1 | starter_package python | 2012-11-30 | 2012-12-13 |  | 112h |
| 28 | 5.2 | bots python | 2013-02-25 | 2013-04-22 | 25, 33, 27 | 448h |
| 29 | 5.3 | bots javas | 2013-02-25 | 2013-04-22 | 25, 33 | 448h |
| 30 | 6 | Production de statistiques | 2013-04-22 | 2013-04-29 | 26 | 56h |
| 31 | 7 | Analyse des statistiques | 2013-04-29 | 2013-05-13 | 30 | 112h |
| 32 | 8 | Rédaction/finalisation du rapport | 2013-05-13 | 2013-08-05 | 31 | 672h |
| 33 | 9 | Recherche théorique | 2012-11-30 | 2012-12-20 |  | 168h |
